# Project1_IDP

Schedule from MS Project, 2019-02-04 to 2019-10-15, costs in $, A marks actual dates.

## Calendars

- Standard: Mon-Thu 00:00-12:00; Fri-Sat off; Sun 00:00-12:00.

## Resources

| Resource | Group | Rate |
| --- | --- | --- |
| Fardin | HW | 1 |
| Imtiaz | HW | 1 |
| Sifat | SW | 1 |
| Arif | SW | 1 |
| Farhan | HW | 1 |
| LED Screen |  | 12 |
| Wifi-module |  | 12 |
| Camera Module |  | 18 |
| Penumatic Cylinder |  | 125 |
| Air compressor |  | 62 |
| Stepper Motor(2)+Driver |  | 24 |
| Valve |  | 38 |
| Base |  | 25 |
| Compressor oil |  | 3 |
| Pipe |  | 14 |
| Filter |  | 5 |
| Penumatic Nipple |  | 15 |
| Bearing |  | 16 |
| Nut |  | 2 |
| Rod fram |  | 70 |
| Nut for frame |  | 4 |
| Arduino MEGA |  | 10 |
| Rasberry Pi |  | 65 |
| Bucket |  | 3 |
| Extra |  | 60 |

## Schedule

| ID | WBS | Task | Type | Duration | Start | Finish | Predecessors | Complete | Remaining | Baseline start | Baseline finish | Baseline duration | Total slack | Constraint | Resources | Work | Actual work | Cost | Baseline cost | Actual cost |
| --- | --- | --- | --- | --- | --- | --- | --- | --- | --- | --- | --- | --- | --- | --- | --- | --- | --- | --- | --- | --- |
| 1 | 1 | **Automatic Laundry System** |  | 272d | 2019-02-04 A | 2019-10-15 |  | 94% | 15.11d | 2019-02-04 | 2019-10-15 | 271d | 0d |  |  | 3656h | 3600h | 3,656 | 44,570 | 3,600 |
| 2 | 1.1 | **Idea** |  | 24.5d | 2019-02-04 A | 2019-02-26 A |  | 100% |  | 2019-02-04 | 2019-02-26 | 24.5d |  |  |  | 640h | 640h | 640 | 8,220 | 640 |
| 3 | 1.1.1 | Determine Project Scope |  | 2d | 2019-02-04 A | 2019-02-05 A |  | 100% |  | 2019-02-04 | 2019-02-05 | 2d |  | start no earlier than 2019-02-04 | Arif; Fardin; Farhan; Imtiaz; Sifat | 80h | 80h | 80 | 1,020 | 80 |
| 4 | 1.1.2 | Determine Project Ideas |  | 3d | 2019-02-07 A | 2019-02-11 A | 3 | 100% |  | 2019-02-07 | 2019-02-11 | 3d |  | start no earlier than 2019-02-07 | Arif; Fardin; Farhan; Imtiaz; Sifat | 120h | 120h | 120 | 1,500 | 120 |
| 5 | 1.1.3 | Project Idea Submission |  | 1d | 2019-02-11 A | 2019-02-12 A | 4 | 100% |  | 2019-02-11 | 2019-02-12 | 1d |  | start no earlier than 2019-02-11 | Arif; Fardin; Farhan; Imtiaz; Sifat | 40h | 40h | 40 | 540 | 40 |
| 6 | 1.1.4 | Study Details Of the Idea |  | 1w | 2019-02-12 A | 2019-02-17 A | 5 | 100% |  | 2019-02-12 | 2019-02-17 | 1w |  | finish no earlier than 2019-02-17 | Arif; Fardin; Farhan; Imtiaz; Sifat | 200h | 200h | 200 | 2,460 | 200 |
| 7 | 1.1.5 | Detail Idea Submission |  | 1d | 2019-02-18 A | 2019-02-18 A | 6 | 100% |  | 2019-02-18 | 2019-02-18 | 1d |  | finish no earlier than 2019-02-18 | Arif; Fardin; Farhan; Imtiaz; Sifat | 40h | 40h | 40 | 540 | 40 |
| 8 | 1.1.6 | Initial Approval |  | 1d | 2019-02-18 A | 2019-02-18 A | 6 | 100% |  | 2019-02-18 | 2019-02-18 | 1d |  | finish no earlier than 2019-02-18 | Arif; Fardin; Farhan; Imtiaz; Sifat | 40h | 40h | 40 | 540 | 40 |
| 9 | 1.1.7 | Project Scheduling |  | 1d | 2019-02-19 A | 2019-02-19 A |  | 100% |  | 2019-02-19 | 2019-02-19 | 1d |  | finish no earlier than 2019-02-19 | Arif; Fardin; Farhan; Imtiaz; Sifat | 40h | 40h | 40 | 540 | 40 |
| 10 | 1.1.8 | Idea Approval |  | 1d | 2019-02-25 A | 2019-02-25 A | 8 | 100% |  | 2019-02-25 | 2019-02-25 | 1d |  | finish no earlier than 2019-02-25 | Arif; Fardin; Farhan; Imtiaz; Sifat | 40h | 40h | 40 | 540 | 40 |
| 11 | 1.1.9 | Final Project Scheduling |  | 1d | 2019-02-26 A | 2019-02-26 A | 9 | 100% |  | 2019-02-26 | 2019-02-26 | 1d |  | finish no earlier than 2019-02-26 | Arif; Fardin; Farhan; Imtiaz; Sifat | 40h | 40h | 40 | 540 | 40 |
| 12 | 1.1.10 | Idea Complete | milestone | 0d | 2019-02-26 A | 2019-02-26 A |  | 100% |  | 2019-02-26 | 2019-02-26 | 0d |  | start no earlier than 2019-02-26 |  |  |  |  |  |  |
| 13 | 1.2 | **Analysis Requirement** |  | 14d | 2019-02-26 A | 2019-03-11 A | 12 | 100% |  | 2019-02-26 | 2019-03-11 | 14d |  |  |  | 360h | 360h | 360 | 4,500 | 360 |
| 14 | 1.2.1 | Conduct needs analysis |  | 3.5d | 2019-02-26 A | 2019-02-28 A |  | 100% |  | 2019-02-26 | 2019-02-28 | 3.5d |  |  | Arif; Fardin; Farhan; Imtiaz; Sifat | 120h | 120h | 120 | 1,500 | 120 |
| 15 | 1.2.2 | Draft preliminary software specifications |  | 5d | 2019-03-03 A | 2019-03-06 A | 14 | 100% |  | 2019-03-03 | 2019-03-06 | 5d |  | finish no earlier than 2019-03-05 | Sifat; Arif | 80h | 80h | 80 | 1,230 | 80 |
| 16 | 1.2.3 | Draft preliminary Hadware specifications |  | 5d | 2019-03-03 A | 2019-03-06 A | 14 | 100% |  | 2019-03-03 | 2019-03-06 | 5d |  |  | Fardin; Imtiaz; Farhan | 120h | 120h | 120 | 1,230 | 120 |
| 17 | 1.2.4 | Develop preliminary budget |  | 1d | 2019-03-06 A | 2019-03-06 A | 15, 16 | 100% |  | 2019-03-06 | 2019-03-06 | 1d |  |  | Imtiaz | 8h | 8h | 8 | 90 | 8 |
| 18 | 1.2.5 | Review specifications/budget with team |  | 1d | 2019-03-07 A | 2019-03-07 A | 17 | 100% |  | 2019-03-07 | 2019-03-07 | 1d |  |  |  |  |  |  | 90 |  |
| 19 | 1.2.6 | Incorporate feedback on software specifications |  | 1d | 2019-03-07 A | 2019-03-10 A | 18 | 100% |  | 2019-03-07 | 2019-03-10 | 1d |  |  | Sifat | 8h | 8h | 8 | 90 | 8 |
| 20 | 1.2.7 | Incorporate feedback on hardware specifications |  | 1d | 2019-03-07 A | 2019-03-10 A | 18 | 100% |  | 2019-03-07 | 2019-03-10 | 1d |  |  | Fardin | 8h | 8h | 8 | 90 | 8 |
| 21 | 1.2.8 | Develop Submission timeline |  | 1d | 2019-03-10 A | 2019-03-10 A | 19, 20 | 100% |  | 2019-03-10 | 2019-03-10 | 1d |  |  | Arif | 8h | 8h | 8 | 90 | 8 |
| 22 | 1.2.9 | Obtain approvals to proceed (concept, timeline, budget) |  | 1d | 2019-03-06 A | 2019-03-06 A | 10 | 100% |  | 2019-02-26 | 2019-02-27 | 1d |  |  | Farhan | 8h | 8h | 8 | 90 | 8 |
| 23 | 1.2.10 | Concept Approval |  | 1d | 2019-03-11 A | 2019-03-11 A | 21 | 100% |  | 2019-03-11 | 2019-03-11 | 1d |  |  |  |  |  |  |  |  |
| 24 | 1.2.11 | Analysis complete | milestone | 0d | 2019-03-11 A | 2019-03-11 A | 23 | 100% |  | 2019-03-11 | 2019-03-11 | 0d |  | finish no earlier than 2019-03-11 |  |  |  |  |  |  |

| ID | WBS | Task | Type | Duration | Start | Finish | Predecessors | Complete | Remaining | Baseline start | Baseline finish | Baseline duration | Total slack | Free slack | Constraint | Resources | Work | Actual work | Cost | Baseline cost | Actual cost |
| --- | --- | --- | --- | --- | --- | --- | --- | --- | --- | --- | --- | --- | --- | --- | --- | --- | --- | --- | --- | --- | --- |
| 25 | 1.3 | **Design** |  | 38d | 2019-03-12 A | 2019-04-16 A | 24 | 100% |  | 2019-03-11 | 2019-04-08 | 30.5d |  |  |  |  | 208h | 208h | 208 | 2,340 | 208 |
| 26 | 1.3.1 | Review Priliminary Software Specification |  | 1d | 2019-03-12 A | 2019-03-12 A | 19 | 100% |  | 2019-03-11 | 2019-03-12 | 1d |  |  | start no earlier than 2019-03-11 |  |  |  |  | 90 |  |
| 27 | 1.3.2 | Review Priliminary Hardware Specification |  | 1d | 2019-03-12 A | 2019-03-12 A | 20 | 100% |  | 2019-03-11 | 2019-03-12 | 1d |  |  | start no earlier than 2019-03-11 | Imtiaz | 8h | 8h | 8 | 90 | 8 |
| 28 | 1.3.3 | Develop Functional Specification |  | 4d | 2019-03-12 A | 2019-03-18 A | 26, 27 | 100% |  | 2019-03-12 | 2019-03-14 | 4d |  |  |  | Fardin; Farhan | 64h | 64h | 64 | 660 | 64 |
| 29 | 1.3.4 | Develop Prototype Based on Functional Specification |  | 8.5d | 2019-03-18 A | 2019-04-08 A | 28 | 100% |  | 2019-03-18 | 2019-04-03 | 7d |  |  | start no earlier than 2019-03-17 | Arif; Sifat | 112h | 112h | 112 | 1,140 | 112 |
| 30 | 1.3.5 | Review Functional Specification |  | 1d | 2019-04-09 A | 2019-04-09 A | 29 | 100% |  | 2019-04-07 | 2019-04-07 | 1d |  |  | start no earlier than 2019-03-25 | Arif | 8h | 8h | 8 | 90 | 8 |
| 31 | 1.3.6 | Incorporate Feedback into Fuctional Specification |  | 1d | 2019-04-09 A | 2019-04-10 A | 30 | 100% |  | 2019-04-07 | 2019-04-08 | 1d |  |  |  | Sifat | 8h | 8h | 8 | 90 | 8 |
| 32 | 1.3.7 | Obtain approval to Proceed |  | 1d | 2019-04-11 A | 2019-04-16 A | 31 | 100% |  | 2019-04-08 | 2019-04-08 | 1d |  |  |  | Imtiaz | 8h | 8h | 8 | 180 | 8 |
| 33 | 1.3.8 | Design Complete | milestone | 0d | 2019-03-28 A | 2019-03-28 A |  | 100% |  | 2019-03-28 | 2019-03-28 | 0d |  |  | finish no earlier than 2019-03-28 |  |  |  |  |  |  |
| 34 | 1.4 | **Development** |  | 212.5d | 2019-03-31 A | 2019-10-15 | 23 | 85% | 31.14d | 2019-03-31 | 2019-10-15 | 212.5d |  |  |  |  | 1456h | 1400h | 1,456 | 16,590 | 1,400 |
| 35 | 1.4.1 | Review functional specifications |  | 1d | 2019-04-08 A | 2019-04-24 A |  | 100% |  | 2019-04-03 | 2019-04-03 | 1d |  |  |  | Imtiaz | 8h | 8h | 8 | 90 | 8 |
| 36 | 1.4.2 | Identify modular/tiered design parameters |  | 1d | 2019-04-24 A | 2019-04-24 A | 35 | 100% |  | 2019-04-07 | 2019-04-07 | 1d |  |  |  |  |  |  |  | 90 |  |
| 37 | 1.4.3 | Assign development staff |  | 1d | 2019-04-07 A | 2019-04-08 A |  | 100% |  | 2019-04-03 | 2019-04-03 | 1d |  |  |  | Fardin | 8h | 8h | 8 | 90 | 8 |
| 38 | 1.4.4 | Buy Components |  | 6d | 2019-03-31 A | 2019-04-07 A |  | 100% |  | 2019-04-02 | 2019-04-08 | 5d |  |  |  | Imtiaz; Fardin; Farhan | 96h | 96h | 96 | 990 | 96 |
| 39 | 1.4.5 | Folding Machine |  | 14d | 2019-04-08 A | 2019-04-23 A | 38 | 100% |  | 2019-04-09 | 2019-04-24 | 14d |  |  | finish no earlier than 2019-04-23 | Imtiaz | 112h | 112h | 112 | 1,130 | 112 |
| 40 | 1.4.6 | Ironing Machine |  | 23d | 2019-04-16 A | 2019-05-09 A |  | 100% |  | 2019-04-16 | 2019-05-09 | 23d |  |  | finish no earlier than 2019-05-09 | Fardin; Farhan | 368h | 368h | 368 | 3,700 | 368 |
| 41 | 1.4.7 | Vending Mechanism |  | 10d | 2019-05-12 A | 2019-07-08 A | 38, 39, 40 | 100% |  | 2019-05-12 | 2019-07-15 | 17d |  |  |  | Arif; Sifat | 160h | 160h | 160 | 1,620 | 160 |
| 42 | 1.4.8 | Integrate VM and Folding Machine |  | 7d | 2019-07-08 | 2019-07-15 | 39, 41 |  |  | 2019-07-15 | 2019-08-04 | 7d | 4.5d | 0d |  | Imtiaz | 56h |  | 56 | 570 |  |
| 43 | 1.4.9 | Integrate VM and Ironing Machine |  | 7d | 2019-07-15 A | 2019-07-21 A | 40, 41, 42 | 100% |  | 2019-08-04 | 2019-08-20 | 7d |  |  |  | Sifat | 56h | 56h | 56 | 570 | 56 |
| 44 | 1.4.10 | Integrate VM,Folding and Ironing |  | 10d | 2019-07-22 | 2019-07-30 | 42, 43 |  |  | 2019-08-21 | 2019-08-29 | 10d | 83d |  |  |  |  |  |  | 810 |  |
| 45 | 1.4.11 | Software Development |  | 10d | 2019-08-01 A | 2019-08-18 A | 44 | 100% |  | 2019-08-29 | 2019-09-16 | 10d |  |  |  | Arif | 80h | 80h | 80 | 810 | 80 |
| 46 | 1.4.12 | Software and VM intigration |  | 4d | 2019-08-18 A | 2019-08-21 A | 45 | 100% |  | 2019-09-16 | 2019-09-18 | 4d |  |  |  |  |  |  |  | 330 |  |
| 47 | 1.4.13 | Overall Intigration |  | 7d | 2019-08-21 A | 2019-08-27 A | 46 | 100% |  | 2019-09-19 | 2019-09-30 | 11d |  |  |  | Arif; Fardin; Farhan; Imtiaz; Sifat | 280h | 280h | 280 | 3,420 | 280 |
| 48 | 1.4.14 | Packaging Machine |  | 5d | 2019-08-28 A | 2019-09-09 A | 47 | 100% |  | 2019-09-30 | 2019-10-03 | 5d |  |  |  | Imtiaz | 40h | 40h | 40 | 410 | 40 |
| 49 | 1.4.15 | Intigration with Packaging |  | 3d | 2019-09-09 A | 2019-09-11 A | 48 | 100% |  | 2019-10-03 | 2019-10-07 | 3d |  |  |  | Imtiaz | 24h | 24h | 24 | 250 | 24 |
| 50 | 1.4.16 | Final Intigration |  | 7d | 2019-09-11 A | 2019-09-17 A | 49 | 100% |  | 2019-10-07 | 2019-10-15 | 7d |  |  |  | Fardin; Farhan; Imtiaz | 168h | 168h | 168 | 1,710 | 168 |
| 51 | 1.4.17 | Development Complete | milestone | 0d | 2019-09-17 A | 2019-09-17 A | 50 | 100% |  | 2019-10-15 | 2019-10-15 | 0d |  |  |  |  |  |  |  |  |  |

| ID | WBS | Task | Type | Duration | Start | Finish | Predecessors | Complete | Actual finish | Baseline start | Baseline finish | Baseline duration | Constraint | Resources | Work | Actual work | Cost | Baseline cost | Actual cost |
| --- | --- | --- | --- | --- | --- | --- | --- | --- | --- | --- | --- | --- | --- | --- | --- | --- | --- | --- | --- |
| 52 | 1.5 | **Testing** |  | 207.5d | 2019-03-31 A | 2019-10-09 | 50 | 100% | 2019-09-22 | 2019-03-31 | 2019-10-09 | 207.5d |  |  | 424h | 424h | 424 | 6,120 | 424 |
| 53 | 1.5.1 | Testing Plan |  | 8d | 2019-03-31 A | 2019-04-08 A | 33 | 100% |  | 2019-03-31 | 2019-04-03 | 5d |  | Sifat; Arif | 80h | 80h | 80 | 1,230 | 80 |
| 54 | 1.5.2 | Folding Machine |  | 4d | 2019-04-24 A | 2019-04-28 A | 39 | 100% |  | 2019-04-24 | 2019-04-28 | 4d |  | Sifat | 32h | 32h | 32 | 330 | 32 |
| 55 | 1.5.3 | Ironing Machine |  | 7d | 2019-05-12 A | 2019-05-16 A | 40 | 100% |  | 2019-05-12 | 2019-05-16 | 7d |  | Arif | 56h | 56h | 56 | 570 | 56 |
| 56 | 1.5.4 | Vending Mechanism |  | 5d | 2019-07-08 A | 2019-07-11 A | 41 | 100% |  | 2019-07-15 | 2019-07-18 | 5d |  |  |  |  |  | 410 |  |
| 57 | 1.5.5 | Integrate VM and Folding Machine |  | 4d | 2019-07-24 A | 2019-07-29 A | 42 | 100% |  | 2019-08-18 | 2019-08-20 | 4d |  | Sifat | 32h | 32h | 32 | 330 | 32 |
| 58 | 1.5.6 | Integrate VM and Ironing Machine |  | 3d | 2019-07-22 A | 2019-07-23 A | 43 | 100% |  | 2019-08-21 | 2019-08-22 | 3d |  |  |  |  |  | 250 |  |
| 59 | 1.5.7 | Integrate VM,Folding and Ironing |  | 3d | 2019-07-30 A | 2019-08-01 A | 44 | 100% |  | 2019-08-29 | 2019-09-09 | 3d |  | Farhan | 24h | 24h | 24 | 250 | 24 |
| 60 | 1.5.8 | Software Development |  | 4d | 2019-08-18 A | 2019-08-21 A | 45 | 100% |  | 2019-09-16 | 2019-09-18 | 4d |  | Fardin | 32h | 32h | 32 | 330 | 32 |
| 61 | 1.5.9 | Software and VM intigration |  | 4d | 2019-09-18 A | 2019-09-22 A | 46 | 100% |  | 2019-09-19 | 2019-09-23 | 4d |  | Imtiaz | 32h | 32h | 32 | 330 | 32 |
| 62 | 1.5.10 | Overall Intigration |  | 4d | 2019-08-28 A | 2019-09-01 A | 47 | 100% |  | 2019-09-30 | 2019-10-02 | 4d |  |  |  |  |  | 330 |  |
| 63 | 1.5.11 | Packaging Machine |  | 2d | 2019-09-09 A | 2019-09-10 A | 48 | 100% |  | 2019-10-03 | 2019-10-06 | 2d |  | Sifat | 16h | 16h | 16 | 170 | 16 |
| 64 | 1.5.12 | Intigration with Packaging |  | 1d | 2019-09-11 A | 2019-09-11 A | 49 | 100% |  | 2019-10-07 | 2019-10-09 | 1d |  |  |  |  |  | 90 |  |
| 65 | 1.5.13 | Final testing |  | 5d | 2019-03-31 A | 2019-04-07 A |  | 100% |  | 2019-03-31 | 2019-04-01 | 3d |  | Arif; Fardin; Farhan; Imtiaz; Sifat | 120h | 120h | 120 | 1,500 | 120 |
| 66 | 1.5.14 | Testing Complete | milestone, manual | 0d | 2019-03-31 A | 2019-03-31 A |  | 100% |  | 2019-03-31 | 2019-03-31 | 0d |  |  |  |  |  |  |  |
| 67 | 1.6 | **Training** |  | 18d | 2019-07-15 A | 2019-07-31 A | 66 | 100% |  | 2019-07-15 | 2019-07-30 | 17.62d |  |  | 232h | 232h | 232 | 2,630 | 232 |
| 68 | 1.6.1 | Develop training specifications for end users |  | 3d | 2019-07-15 A | 2019-07-17 A | 66 | 100% |  | 2019-07-15 | 2019-07-17 | 3d |  |  |  |  |  | 250 |  |
| 69 | 1.6.2 | Develop training specifications for helpdesk support staff |  | 3d | 2019-07-17 A | 2019-07-21 A | 68 | 100% |  | 2019-07-17 | 2019-07-21 | 3d |  | Farhan | 24h | 24h | 24 | 250 | 24 |
| 70 | 1.6.3 | Identify training delivery methodology (computer based training, classroom, etc.) |  | 2d | 2019-07-30 A | 2019-07-31 A | 69 | 100% |  | 2019-07-21 | 2019-07-22 | 2d |  | Fardin | 16h | 16h | 16 | 170 | 16 |
| 71 | 1.6.4 | Develop training materials |  | 3w | 2019-07-15 A | 2019-07-29 A |  | 100% |  | 2019-07-15 | 2019-07-29 | 3w |  | Imtiaz | 120h | 120h | 120 | 1,210 | 120 |
| 72 | 1.6.5 | Conduct training usability study |  | 4d | 2019-07-15 A | 2019-07-18 A |  | 100% |  | 2019-07-15 | 2019-07-18 | 4d |  | Arif | 32h | 32h | 32 | 330 | 32 |
| 73 | 1.6.6 | Finalize training materials |  | 3d | 2019-07-29 A | 2019-07-31 A |  | 100% |  | 2019-07-15 | 2019-07-17 | 3d |  | Sifat | 24h | 24h | 24 | 250 | 24 |
| 74 | 1.6.7 | Develop training delivery mechanism |  | 2d | 2019-07-22 A | 2019-07-23 A |  | 100% |  | 2019-07-15 | 2019-07-16 | 2d |  | Sifat | 16h | 16h | 16 | 170 | 16 |
| 75 | 1.6.8 | Training materials complete | milestone | 0d | 2019-07-29 A | 2019-07-29 A | 74 | 100% |  | 2019-07-29 | 2019-07-29 | 0d | finish no earlier than 2019-07-29 |  |  |  |  |  |  |

| ID | WBS | Task | Type | Duration | Start | Finish | Predecessors | Complete | Baseline start | Baseline finish | Baseline duration | Constraint | Resources | Work | Actual work | Cost | Baseline cost | Actual cost |
| --- | --- | --- | --- | --- | --- | --- | --- | --- | --- | --- | --- | --- | --- | --- | --- | --- | --- | --- |
| 76 | 1.7 | **Documentation** |  | 29.62d | 2019-07-15 A | 2019-08-11 A | 75 | 100% | 2019-07-15 | 2019-08-11 | 29.62d |  |  | 296h | 296h | 296 | 3,440 | 296 |
| 77 | 1.7.1 | Develop Help specification |  | 1d | 2019-07-15 A | 2019-07-16 A | 66 | 100% | 2019-07-15 | 2019-07-16 | 1d |  | Fardin | 8h | 8h | 8 | 90 | 8 |
| 78 | 1.7.2 | Develop Help system |  | 3w | 2019-07-16 A | 2019-07-30 A | 77 | 100% | 2019-07-16 | 2019-07-30 | 3w |  | Fardin | 120h | 120h | 120 | 1,210 | 120 |
| 79 | 1.7.3 | Review Help documentation |  | 3d | 2019-07-30 A | 2019-08-01 A | 78 | 100% | 2019-07-30 | 2019-08-01 | 3d |  |  |  |  |  | 250 |  |
| 80 | 1.7.4 | Incorporate Help documentation feedback |  | 2d | 2019-07-15 A | 2019-07-16 A |  | 100% | 2019-07-15 | 2019-07-16 | 2d |  | Arif | 16h | 16h | 16 | 170 | 16 |
| 81 | 1.7.5 | Develop user manuals specifications |  | 2d | 2019-07-23 A | 2019-07-24 A | 80 | 100% | 2019-07-17 | 2019-07-18 | 2d |  | Sifat | 16h | 16h | 16 | 170 | 16 |
| 82 | 1.7.6 | Develop user manuals |  | 3w | 2019-07-24 A | 2019-08-07 A | 81 | 100% | 2019-07-18 | 2019-08-01 | 3w |  | Arif | 120h | 120h | 120 | 1,210 | 120 |
| 83 | 1.7.7 | Review all user documentation |  | 2d | 2019-07-17 A | 2019-07-18 A | 84 | 100% | 2019-07-17 | 2019-07-18 | 2d |  |  |  |  |  | 170 |  |
| 84 | 1.7.8 | Incorporate user documentation feedback |  | 2d | 2019-07-15 A | 2019-07-16 A |  | 100% | 2019-07-15 | 2019-07-16 | 2d |  | Farhan | 16h | 16h | 16 | 170 | 16 |
| 85 | 1.7.9 | Documentation complete | milestone | 0d | 2019-08-11 A | 2019-08-11 A | 84 | 100% | 2019-08-11 | 2019-08-11 | 0d | finish no earlier than 2019-08-11 |  |  |  |  |  |  |
| 86 | 1.8 | **Deployment** |  | 5d | 2019-08-18 A | 2019-08-21 A | 85 | 100% | 2019-08-18 | 2019-08-21 | 5d |  |  | 24h | 24h | 24 | 450 | 24 |
| 87 | 1.8.1 | Determine final deployment strategy |  | 1d | 2019-08-18 A | 2019-08-18 A |  | 100% | 2019-08-18 | 2019-08-18 | 1d |  | Sifat | 8h | 8h | 8 | 90 | 8 |
| 88 | 1.8.2 | Develop deployment methodology |  | 1d | 2019-08-18 A | 2019-08-19 A | 87 | 100% | 2019-08-18 | 2019-08-19 | 1d |  |  |  |  |  | 90 |  |
| 89 | 1.8.3 | Secure deployment resources |  | 1d | 2019-08-19 A | 2019-08-19 A | 88 | 100% | 2019-08-19 | 2019-08-19 | 1d |  | Farhan | 8h | 8h | 8 | 90 | 8 |
| 90 | 1.8.4 | Train support staff |  | 1d | 2019-08-20 A | 2019-08-20 A | 89 | 100% | 2019-08-20 | 2019-08-20 | 1d |  | Sifat | 8h | 8h | 8 | 90 | 8 |
| 91 | 1.8.5 | Deploy software |  | 1d | 2019-08-20 A | 2019-08-21 A | 90 | 100% | 2019-08-20 | 2019-08-21 | 1d |  |  |  |  |  | 90 |  |
| 92 | 1.8.6 | Deployment complete | milestone | 0d | 2019-08-21 A | 2019-08-21 A | 91 | 100% | 2019-08-21 | 2019-08-21 | 0d |  |  |  |  |  |  |  |
| 93 | 1.9 | **Post Implement Review** |  | 10d | 2019-08-21 A | 2019-08-29 A | 92 | 100% | 2019-08-21 | 2019-08-25 | 3d |  |  | 16h | 16h | 16 | 280 | 16 |
| 94 | 1.9.1 | Document lessons learned |  | 1d | 2019-08-21 A | 2019-08-21 A | 33 | 100% | 2019-08-21 | 2019-08-21 | 1d |  | Farhan | 8h | 8h | 8 | 90 | 8 |
| 95 | 1.9.2 | Distribute to team members |  | 1d | 2019-08-28 A | 2019-08-29 A | 94 | 100% | 2019-08-22 | 2019-08-22 | 1d |  | Sifat | 8h | 8h | 8 | 90 | 8 |
| 96 | 1.9.3 | Create software maintenance team |  | 1d | 2019-08-29 A | 2019-08-29 A | 95 | 100% | 2019-08-22 | 2019-08-25 | 1d |  |  |  |  |  | 90 |  |
| 97 | 1.9.4 | Post implementation review complete | milestone | 0d | 2019-08-29 A | 2019-08-29 A | 96 | 100% | 2019-08-25 | 2019-08-25 | 0d |  | Arif |  |  |  | 10 |  |
| 98 | 1.10 | Complete Project | milestone | 0d | 2019-10-15 A | 2019-10-15 A | 97 | 100% | 2019-08-25 | 2019-08-25 | 0d | finish no earlier than 2019-10-15 |  |  |  |  |  |  |
